# Cronograma Projeto - Registro Caixa

How a schedule from MS Project changed from version to version. A marks actual dates.

## Version 1 (saved 2016-03-09)

Note of the change: 09.03.2016-ms-project

| ID | WBS | Task | Duration | Start | Finish | Predecessors | Complete | Total float | Constraint |
| --- | --- | --- | --- | --- | --- | --- | --- | --- | --- |
| 1 | 1 | **Prática em SI - Cronograma Projeto - My Money** | 106d | 2016-03-02 | 2016-07-27 |  | 4% |  |  |
| 2 | 1.1 | **Concepção** | 26d | 2016-03-02 | 2016-04-06 |  | 5% |  |  |
| 3 |  | Plano de Projeto | 264.88d | 2015-03-02 A | 2016-03-04 |  | 5% | 0.12d | finish no earlier than 2016-03-04 |
| 4 |  | Cronograma | 3d | 2016-03-04 A | 2016-03-08 | 3 | 33% |  |  |
| 5 |  | Modelagem de Processos de Negócio | 7d | 2016-03-09 | 2016-03-18 | 4 |  | 83.88d | start no earlier than 2016-03-09 |
| 6 | 1.1.4 | **Requisitos e Análise** | 14d | 2016-03-18 | 2016-04-06 |  |  |  |  |
| 7 |  | Casos de Uso / Requisitos Funcionais | 7d | 2016-03-18 | 2016-03-29 | 5 |  |  |  |
| 8 |  | Requisitos Não Funcionais | 2d | 2016-03-18 | 2016-03-22 | 5 |  |  |  |
| 9 |  | Modelo de Domínio Preliminar | 3d | 2016-03-29 | 2016-04-01 | 7, 8 |  |  |  |
| 10 |  | Estimativa | 2d | 2016-04-01 | 2016-04-05 | 9 |  |  |  |
| 11 | 1.1.4.5 | **Gerenciamento de Projeto** | 20.88d | 2016-03-08 | 2016-04-05 |  |  | 0d |  |
| 12 |  | Monitoramento e controle - Relatório de Progresso 01 | 1d | 2016-03-08 | 2016-03-08 |  |  |  |  |
| 13 |  | Monitoramento e controle - Relatório de Progresso 02 | 1d | 2016-03-15 | 2016-03-15 |  |  |  |  |
| 14 |  | Monitoramento e controle - Relatório de Progresso 03 | 1d | 2016-03-22 | 2016-03-22 |  |  |  |  |
| 15 |  | Monitoramento e controle - Relatório de Progresso 04 | 1d | 2016-03-29 | 2016-03-29 |  |  |  |  |
| 16 |  | Monitoramento e controle - Relatório de Progresso 05 | 1d | 2016-04-05 | 2016-04-05 |  |  |  |  |
| 17 |  | Apresentação 1o Trabalho | 1d | 2015-04-06 | 2015-04-06 |  |  |  |  |
| 18 | 1.3 | **Elaboração** | 243d? | 2015-03-30 | 2016-03-03 |  |  | 0d |  |
| 19 | 1.3.1 | **Gerenciamento de Projeto** | 7d? | 2015-03-30 | 2015-04-08 |  |  | 0d |  |
| 20 |  | Revisão do Planejamento | 1d? | 2015-03-30 | 2015-03-31 | 17 |  |  |  |
| 21 |  | Monitoramento e controle - Relatório de Progresso ?? | 1d | 2015-03-31 | 2015-04-01 | 20 |  |  |  |
| 22 |  | Monitoramento e controle - Relatório de Progresso ?? | 1d? | 2015-04-07 | 2015-04-08 | 20FS+5d |  |  |  |
| 23 |  | Projeto (arquitetura) | 1d | 2016-03-02 | 2016-03-03 | 20 |  | 100.88d |  |
| 24 | 1.3.3 | **UC01: Registro de Caixa** | 3d? | 2015-04-01 | 2015-04-06 |  |  | 0d |  |
| 25 |  | Requisitos e Análise (detalhamento) | 1d? | 2015-04-01 | 2015-04-02 | 23 |  |  |  |
| 26 |  | Implementação | 1d? | 2015-04-02 | 2015-04-03 | 25 |  |  |  |
| 27 |  | Teste | 1d? | 2015-04-03 | 2015-04-06 | 26 |  |  |  |
| 28 | 1.3.4 | **UC02: Impressão de Bilhete** | 3d? | 2015-04-02 | 2015-04-07 |  |  | 0d |  |
| 29 |  | Requisitos e Análise (detalhamento) | 1d? | 2015-04-02 | 2015-04-03 | 25 |  |  |  |
| 30 |  | Implementação | 1d? | 2015-04-03 | 2015-04-06 | 26, 29 |  |  |  |
| 31 |  | Teste | 1d? | 2015-04-06 | 2015-04-07 | 27, 30 |  |  |  |
| 32 |  | Apresentação 2o Trabalho | 4d | 2015-05-04 | 2015-05-07 |  |  |  |  |
| 33 | 1.5 | **Construção** | 6d? | 2015-03-02 | 2015-03-10 |  |  | 0d |  |
| 34 | 1.5.1 | **Gerenciamento de Projeto** | 1d? | 2015-03-02 | 2015-03-03 |  |  | 0d |  |
| 35 |  | Planejamento | 1d? | 2015-03-02 | 2015-03-03 |  |  |  |  |
| 36 |  | Monitoramento e controle - Relatório de Progresso ?? | 1d? | 2015-03-02 | 2015-03-03 |  |  |  |  |
| 37 |  | Monitoramento e controle - Relatório de Progresso ?? | 1d? | 2015-03-02 | 2015-03-03 |  |  |  |  |
| 38 | 1.5.2 | **UC03: Fechamento de Caixa** | 3d? | 2015-03-03 | 2015-03-06 |  |  | 0d |  |
| 39 |  | Requisitos e Análise (detalhamento) | 1d? | 2015-03-03 | 2015-03-04 | 35 |  |  |  |
| 40 |  | Implementação | 1d? | 2015-03-04 | 2015-03-05 | 39 |  |  |  |
| 41 |  | Teste | 1d? | 2015-03-05 | 2015-03-06 | 40 |  |  |  |
| 42 | 1.5.3 | **UC04: Cadastro de Produto** | 3d? | 2015-03-04 | 2015-03-09 |  |  | 0d |  |
| 43 |  | Requisitos e Análise (detalhamento) | 1d? | 2015-03-04 | 2015-03-05 | 39 |  |  |  |
| 44 |  | Implementação | 1d? | 2015-03-05 | 2015-03-06 | 43, 40 |  |  |  |
| 45 |  | Teste | 1d? | 2015-03-06 | 2015-03-09 | 44, 41 |  |  |  |
| 46 | 1.5.4 | **UC05: Cadastro de Caixa** | 3d? | 2015-03-05 | 2015-03-10 |  |  | 0d |  |
| 47 |  | Requisitos e Análise (detalhamento) | 1d? | 2015-03-05 | 2015-03-06 | 43 |  |  |  |
| 48 |  | Implementação | 1d? | 2015-03-06 | 2015-03-09 | 44, 47 |  |  |  |
| 49 |  | Teste | 1d? | 2015-03-09 | 2015-03-10 | 45, 48 |  |  |  |
| 50 | 1.6 | **Transição** | 1d | 2016-03-02 | 2016-03-03 |  |  | 104.88d |  |
| 51 |  | Implantação | 1d | 2016-03-02 | 2016-03-03 | 47 |  | 104.88d |  |
| 52 |  | Apresentação 3o Trabalho | 2d | 2015-06-25 | 2015-06-29 |  |  |  |  |

## Version 2 (saved 2016-03-23)

Last finish stays 2016-07-27. Complete tasks 0 → 2.

Removed: 3 Plano de Projeto

Changed:

| ID | Task | Start | Finish | Duration | Complete | Total float | Predecessors | Other |
| --- | --- | --- | --- | --- | --- | --- | --- | --- |
| 1 | **Prática em SI - Cronograma Projeto - My Money** |  |  |  | 4% → 27% |  |  |  |
| 2 | **Concepção** | 2016-03-02 A |  |  | 5% → 53% |  |  |  |
| 4 | Cronograma |  | 2016-03-08 → 2016-03-09 A (+1d) |  | 33% → 100% |  | Plano de Projeto → none | resources Analista de Sistemas; Gerente de Projeto → Gerente de Projeto-Lucas Amaral; Analista de Sistemas-Rogério R. Fernandes |
| 5 | Modelagem de Processos de Negócio | 2016-03-09 A | 2016-03-18 A |  | 0% → 100% | 83.88d → none |  | resources Analista de Sistemas; Gerente de Projeto → Gerente de Projeto-Rogério R. Fernandes; Analista de Sistemas-Lucas Amaral |
| 6 | **Requisitos e Análise** | 2016-03-18 → 2016-03-08 A (-10d) |  | 14d → 22d | 0% → 24% |  |  | resources Analista de Sistemas; Gerente de Projeto → Gerente de Projeto-Lucas Amaral; Analista de Sistemas-Rogério R. Fernandes |
| 7 | Casos de Uso / Requisitos Funcionais | 2016-03-18 A |  |  | 0% → 50% |  |  | resources Analista de Sistemas; Gerente de Projeto → Analista de Sistemas-Lucas Amaral; Gerente de Projeto-Rogério R. Fernandes |
| 8 | Requisitos Não Funcionais | 2016-03-18 A |  |  | 0% → 50% |  |  | resources Analista de Sistemas; Gerente de Projeto → Gerente de Projeto-Lucas Amaral; Analista de Sistemas-Rogério R. Fernandes |
| 9 | Modelo de Domínio Preliminar |  |  |  |  |  |  | resources Analista de Sistemas; Gerente de Projeto → Analista de Sistemas-Lucas Amaral; Gerente de Projeto-Rogério R. Fernandes |
| 10 | Estimativa |  |  |  |  |  |  | resources Analista de Sistemas; Gerente de Projeto → Gerente de Projeto-Lucas Amaral; Analista de Sistemas-Rogério R. Fernandes |
| 11 | **Gerenciamento de Projeto** |  |  |  |  |  |  | resources Analista de Sistemas; Gerente de Projeto → Gerente de Projeto-Rogério R. Fernandes; Analista de Sistemas-Lucas Amaral |
| 12 | Monitoramento e controle - Relatório de Progresso 01 |  |  |  |  |  |  | resources Gerente de Projeto; Analista de Sistemas → Analista de Sistemas-Rogério R. Fernandes; Gerente de Projeto-Lucas Amaral |
| 13 | Monitoramento e controle - Relatório de Progresso 02 |  |  |  |  |  |  | resources Gerente de Projeto; Analista de Sistemas → Analista de Sistemas-Lucas Amaral; Gerente de Projeto-Rogério R. Fernandes |
| 14 | Monitoramento e controle - Relatório de Progresso 03 |  |  |  |  |  |  | resources Gerente de Projeto; Analista de Sistemas → Analista de Sistemas-Rogério R. Fernandes; Gerente de Projeto-Lucas Amaral |
| 15 | Monitoramento e controle - Relatório de Progresso 04 |  |  |  |  |  |  | resources Gerente de Projeto; Analista de Sistemas → Analista de Sistemas-Lucas Amaral; Gerente de Projeto-Rogério R. Fernandes |
| 16 | Monitoramento e controle - Relatório de Progresso 05 |  |  |  |  |  |  | resources Gerente de Projeto; Analista de Sistemas → Analista de Sistemas-Rogério R. Fernandes; Gerente de Projeto-Lucas Amaral |

## Version 3 (saved 2016-04-06)

Last finish stays 2016-07-27. Complete tasks 2 → 9.

Added:

| ID | Task | Duration | Start | Finish | Constraint | Resources |
| --- | --- | --- | --- | --- | --- | --- |
| 3 | Plano de Projeto | 2d | 2016-03-02 A | 2016-03-04 | finish no earlier than 2016-03-03 | Gerente-Lucas Amaral; Gerente de Projeto-Rogério R. Fernandes |

Changed:

| ID | Task | Start | Finish | Duration | Complete | Total float | Predecessors |
| --- | --- | --- | --- | --- | --- | --- | --- |
| 1 | **Prática em SI - Cronograma Projeto - My Money** |  |  |  | 27% → 43% |  |  |
| 2 | **Concepção** |  |  |  | 53% → 85% |  |  |
| 4 | Cronograma |  |  |  |  |  | none → 3 |
| 5 | Modelagem de Processos de Negócio |  | 2016-03-18 A → 2016-03-18 |  | 100% → 50% | none → 93.88d |  |
| 6 | **Requisitos e Análise** |  |  |  | 24% → 95% |  |  |
| 7 | Casos de Uso / Requisitos Funcionais |  | 2016-03-29 A |  | 50% → 100% |  |  |
| 8 | Requisitos Não Funcionais |  | 2016-03-22 A |  | 50% → 100% |  |  |
| 9 | Modelo de Domínio Preliminar | 2016-03-29 A | 2016-04-01 A |  | 0% → 100% |  |  |
| 10 | Estimativa | 2016-04-01 A | 2016-04-05 A |  | 0% → 100% |  |  |
| 11 | **Gerenciamento de Projeto** | 2016-03-08 A | 2016-04-05 → 2016-04-06 (+1d) | 20.88d → 21d | 0% → 80% | 0d → none |  |
| 12 | Monitoramento e controle - Relatório de Progresso 01 | 2016-03-08 A | 2016-03-08 A |  | 0% → 100% |  |  |
| 13 | Monitoramento e controle - Relatório de Progresso 02 | 2016-03-15 A | 2016-03-15 A |  | 0% → 100% |  |  |
| 14 | Monitoramento e controle - Relatório de Progresso 03 | 2016-03-22 A | 2016-03-22 A |  | 0% → 100% |  |  |
| 15 | Monitoramento e controle - Relatório de Progresso 04 | 2016-03-29 A | 2016-03-29 A |  | 0% → 100% |  |  |

## Version 4 (saved 2016-04-27)

Note of the change: 27_04_2016

Last finish stays 2016-07-27. Complete tasks 9 → 11.

Added:

| ID | Task | Duration | Start | Finish | Predecessors | Resources |
| --- | --- | --- | --- | --- | --- | --- |
| 22 | Monitoramento e controle - Relatório de Progresso 07 | 1d | 2016-04-27 | 2016-04-28 | 21 | Gerente de Projeto-Lucas Amaral; Analista de Sistemas-Rogério R. Fernandes |
| 23 | Monitoramento e controle - Relatório de Progresso 08 | 1d | 2016-04-28 | 2016-04-29 | 22 | Gerente de Projeto-Rogério R. Fernandes; Analista de Sistemas-Lucas Amaral |
| 25 | Monitoramento e controle - Relatório de Progresso 10 | 1d | 2016-05-02 | 2016-05-03 | 24 | Gerente de Projeto-Rogério R. Fernandes; Analista de Sistemas-Lucas Amaral |
| 27 | Preparação do ambiente de desenvolvimento | 1d? | 2016-04-25 | 2016-04-26 |  |  |

Changed:

| ID | Task | Start | Finish | Duration | Complete | Total float | Predecessors | Other |
| --- | --- | --- | --- | --- | --- | --- | --- | --- |
| 1 | **Prática em SI - Cronograma Projeto - My Money** | 2016-03-02 A |  |  | 43% → 36% |  |  |  |
| 17 | Apresentação 1o Trabalho | 2015-04-06 → 2016-04-06 (+366d) | 2015-04-06 → 2016-04-13 (+373d) | 1d → 6d |  |  |  |  |
| 18 | **Elaboração** | 2015-03-30 → 2016-04-25 A (+392d) | 2016-03-03 → 2016-05-24 (+82d) | 243d? → 22d | 0% → 8% | 0d → none |  |  |
| 19 | **Gerenciamento de Projeto** | 2015-03-30 → 2016-04-25 A (+392d) | 2015-04-08 → 2016-05-05 (+393d) | 7d? → 9d | 0% → 33% | 0d → none |  | resources none → Gerente-Lucas Amaral; Gerente de Projeto-Rogério R. Fernandes |
| 20 | Revisão do Planejamento | 2015-03-30 → 2016-04-25 A (+392d) | 2015-03-31 → 2016-04-25 A (+391d) | 1d? → 1d | 0% → 100% |  |  | resources Gerente de Projeto → Gerente de Projeto-Lucas Amaral; Analista de Sistemas-Rogério R. Fernandes |
| 21 | Monitoramento e controle - Relatório de Progresso 06 | 2015-03-31 → 2016-04-26 A (+392d) | 2015-04-01 → 2016-04-27 A (+392d) |  | 0% → 100% |  |  | was named Monitoramento e controle - Relatório de Progresso ??; resources Gerente de Projeto → Gerente de Projeto-Rogério R. Fernandes; Analista de Sistemas-Lucas Amaral |
| 24 | Monitoramento e controle - Relatório de Progresso 09 | 2015-04-07 → 2016-04-29 (+388d) | 2015-04-08 → 2016-05-02 (+390d) | 1d? → 1d |  |  | 20FS+5d → 23 | was named Monitoramento e controle - Relatório de Progresso ??; resources Gerente de Projeto → Gerente de Projeto-Lucas Amaral; Analista de Sistemas-Rogério R. Fernandes |
| 26 | Projeto (arquitetura) | 2016-03-02 → 2016-04-27 A (+56d) | 2016-03-03 → 2016-05-05 (+63d) | 1d → 6d | 0% → 2% | 100.88d → 48.88d |  | constraint none → finish no earlier than 2016-05-04 |
| 28 | **UC05: Manter usuário** | 2015-04-01 → 2016-05-02 (+397d) | 2015-04-06 → 2016-05-18 (+408d) | 3d? → 13d |  | 0d → none |  | was named UC01: Registro de Caixa |
| 29 | Requisitos e Análise (detalhamento) | 2015-04-01 → 2016-05-06 (+401d) | 2015-04-02 → 2016-05-06 (+400d) | 1d? → 1d |  |  |  |  |
| 30 | Implementação | 2015-04-02 → 2016-05-09 (+403d) | 2015-04-03 → 2016-05-17 (+410d) | 1d? → 7d |  | none → 48d |  |  |
| 31 | Teste | 2015-04-03 → 2016-05-18 (+411d) | 2015-04-06 → 2016-05-18 (+408d) | 1d? → 1d |  | none → 49d |  |  |
| 32 | **UC01: Manter despesas financeiras** | 2015-04-02 → 2016-05-18 (+412d) | 2015-04-07 → 2016-05-24 (+413d) | 3d? → 5d |  | 0d → none |  | was named UC02: Impressão de Bilhete |
| 33 | Requisitos e Análise (detalhamento) | 2015-04-02 → 2016-05-18 (+412d) | 2015-04-03 → 2016-05-20 (+413d) | 1d? → 2d |  |  |  |  |
| 34 | Implementação | 2015-04-03 → 2016-05-20 (+413d) | 2015-04-06 → 2016-05-24 (+414d) | 1d? → 2d |  | none → 45.88d |  |  |
| 35 | Teste | 2015-04-06 → 2016-05-24 (+414d) | 2015-04-07 → 2016-05-24 (+413d) | 1d? → 1d |  |  |  |  |
| 36 | Apresentação 2o Trabalho | 2015-05-04 → 2016-05-25 (+387d) | 2015-05-07 → 2016-05-25 (+384d) | 4d → 1d |  |  |  |  |
| 37 | **Construção** | 2015-03-02 → 2016-05-26 (+451d) | 2015-03-10 → 2016-06-16 (+464d) | 6d? → 15d? |  |  |  |  |
| 38 | **Gerenciamento de Projeto** | 2015-03-02 → 2016-05-26 (+451d) | 2015-03-03 → 2016-05-27 (+451d) |  |  |  |  |  |
| 39 | Planejamento | 2015-03-02 → 2016-05-26 (+451d) | 2015-03-03 → 2016-05-27 (+451d) |  |  |  |  |  |
| 40 | Monitoramento e controle - Relatório de Progresso ?? | 2015-03-02 → 2016-05-26 (+451d) | 2015-03-03 → 2016-05-27 (+451d) |  |  |  |  |  |
| 41 | Monitoramento e controle - Relatório de Progresso ?? | 2015-03-02 → 2016-05-26 (+451d) | 2015-03-03 → 2016-05-27 (+451d) |  |  |  |  |  |
| 42 | **UC03: Fechamento de Caixa** | 2015-03-03 → 2016-05-28 (+452d) | 2015-03-06 → 2016-06-03 (+455d) | 3d? → 4.12d? |  |  |  |  |
| 43 | Requisitos e Análise (detalhamento) | 2015-03-03 → 2016-05-28 (+452d) | 2015-03-04 → 2016-05-30 (+453d) |  |  |  |  |  |
| 44 | Implementação | 2015-03-04 → 2016-05-31 (+454d) | 2015-03-05 → 2016-06-01 (+454d) |  |  |  |  |  |
| 45 | Teste | 2015-03-05 → 2016-06-02 (+455d) | 2015-03-06 → 2016-06-03 (+455d) |  |  |  |  |  |
| 46 | **UC04: Cadastro de Produto** | 2015-03-04 → 2016-06-04 (+458d) | 2015-03-09 → 2016-06-10 (+459d) | 3d? → 4.12d? |  |  |  |  |
| 47 | Requisitos e Análise (detalhamento) | 2015-03-04 → 2016-06-04 (+458d) | 2015-03-05 → 2016-06-06 (+459d) |  |  |  |  |  |
| 48 | Implementação | 2015-03-05 → 2016-06-07 (+460d) | 2015-03-06 → 2016-06-08 (+460d) |  |  |  |  |  |
| 49 | Teste | 2015-03-06 → 2016-06-09 (+461d) | 2015-03-09 → 2016-06-10 (+459d) |  |  |  |  |  |
| 50 | **UC05: Cadastro de Caixa** | 2015-03-05 → 2016-06-11 (+464d) | 2015-03-10 → 2016-06-16 (+464d) | 3d? → 3.12d? |  |  |  |  |
| 51 | Requisitos e Análise (detalhamento) | 2015-03-05 → 2016-06-11 (+464d) | 2015-03-06 → 2016-06-13 (+465d) |  |  |  |  |  |
| 52 | Implementação | 2015-03-06 → 2016-06-14 (+466d) | 2015-03-09 → 2016-06-15 (+464d) |  |  |  |  |  |
| 53 | Teste | 2015-03-09 → 2016-06-15 (+464d) | 2015-03-10 → 2016-06-16 (+464d) |  |  |  |  |  |
| 54 | **Transição** | 2016-03-02 → 2016-06-16 (+106d) | 2016-03-03 → 2016-06-17 (+106d) |  |  | 104.88d → 28.88d |  |  |
| 55 | Implantação | 2016-03-02 → 2016-06-16 (+106d) | 2016-03-03 → 2016-06-17 (+106d) |  |  | 104.88d → 28.88d | 51 → 53 |  |
| 56 | Apresentação 3o Trabalho | 2015-06-25 → 2016-06-25 (+366d) | 2015-06-29 → 2016-06-28 (+365d) |  |  |  |  |  |

## Version 5 (saved 2016-05-04)

Note of the change: atualizado project

Last finish stays 2016-07-27. Complete tasks 11 → 13.

Changed:

| ID | Task | Start | Finish | Duration | Complete | Total float | Other |
| --- | --- | --- | --- | --- | --- | --- | --- |
| 1 | **Prática em SI - Cronograma Projeto - My Money** |  |  |  | 36% → 45% |  |  |
| 18 | **Elaboração** | 2016-04-25 A → 2016-04-25 |  |  | 8% → 38% |  |  |
| 19 | **Gerenciamento de Projeto** | 2016-04-25 A → 2016-04-20 A (-5d) | 2016-05-05 → 2016-05-24 (+19d) | 9d → 24.88d | 33% → 50% | none → 0d |  |
| 20 | Revisão do Planejamento | 2016-04-25 A → 2016-04-20 A (-5d) | 2016-04-25 A → 2016-04-20 A (-5d) |  |  |  |  |
| 21 | Monitoramento e controle - Relatório de Progresso 06 |  |  |  |  |  | constraint none → finish no earlier than 2016-04-27 |
| 22 | Monitoramento e controle - Relatório de Progresso 07 | 2016-04-27 → 2016-05-04 A (+7d) | 2016-04-28 → 2016-05-04 A (+6d) |  | 0% → 100% |  |  |
| 23 | Monitoramento e controle - Relatório de Progresso 08 | 2016-04-28 → 2016-05-11 (+13d) | 2016-04-29 → 2016-05-11 (+12d) |  |  |  |  |
| 24 | Monitoramento e controle - Relatório de Progresso 09 | 2016-04-29 → 2016-05-18 (+19d) | 2016-05-02 → 2016-05-18 (+16d) |  |  |  |  |
| 25 | Monitoramento e controle - Relatório de Progresso 10 | 2016-05-02 → 2016-05-24 (+22d) | 2016-05-03 → 2016-05-24 (+21d) |  |  |  |  |
| 26 | Projeto (arquitetura) | 2016-04-27 A → 2016-04-26 A (-1d) | 2016-05-05 → 2016-05-04 A (-1d) |  | 2% → 100% | 48.88d → none |  |
| 27 | Preparação do ambiente de desenvolvimento | 2016-04-25 → 2016-05-04 A (+9d) | 2016-04-26 → 2016-05-11 (+15d) | 1d? → 6d | 0% → 50% |  |  |

## Version 6 (saved 2016-05-12)

Note of the change: 11_05_2016

Last finish stays 2016-07-27. Complete tasks 13 → 21.

Changed:

| ID | Task | Start | Finish | Duration | Complete | Total float | Other |
| --- | --- | --- | --- | --- | --- | --- | --- |
| 1 | **Prática em SI - Cronograma Projeto - My Money** |  |  |  | 45% → 68% |  |  |
| 2 | **Concepção** |  |  |  | 85% → 99% |  |  |
| 3 | Plano de Projeto |  | 2016-03-04 A |  | 94% → 100% | 103.88d → none |  |
| 5 | Modelagem de Processos de Negócio |  | 2016-03-18 A |  | 50% → 100% | 93.88d → none |  |
| 6 | **Requisitos e Análise** |  |  |  | 95% → 99% |  |  |
| 11 | **Gerenciamento de Projeto** |  |  |  | 80% → 99% |  |  |
| 16 | Monitoramento e controle - Relatório de Progresso 05 | 2016-04-05 A | 2016-04-05 A |  | 0% → 100% |  |  |
| 17 | Apresentação 1o Trabalho | 2016-04-06 A | 2016-04-13 A |  | 0% → 100% |  |  |
| 18 | **Elaboração** |  |  |  | 38% → 65% |  |  |
| 19 | **Gerenciamento de Projeto** |  |  | 24.88d → 24d | 50% → 67% | 0d → none |  |
| 23 | Monitoramento e controle - Relatório de Progresso 08 | 2016-05-11 A | 2016-05-11 A |  | 0% → 100% |  |  |
| 25 | Monitoramento e controle - Relatório de Progresso 10 | 2016-05-24 → 2016-05-23 (-1d) |  |  |  |  |  |
| 26 | Projeto (arquitetura) |  | 2016-05-04 A → 2016-05-11 A (+7d) | 6d → 11d |  |  | resources Arquiteto de Software → Gerente de Projeto-Rogério R. Fernandes; Analista de Sistemas-Lucas Amaral |
| 27 | Preparação do ambiente de desenvolvimento |  | 2016-05-11 A |  | 50% → 100% |  | resources none → Gerente de Projeto-Lucas Amaral; Analista de Sistemas-Rogério R. Fernandes |
| 28 | **UC05: Manter usuário** |  |  |  | 0% → 11% |  |  |
| 29 | Requisitos e Análise (detalhamento e prototipação) | 2016-05-06 A | 2016-05-06 A |  | 0% → 100% |  | was named Requisitos e Análise (detalhamento); resources Analista de Sistemas → Gerente de Projeto-Lucas Amaral; Analista de Sistemas-Rogério R. Fernandes |
| 30 | Implementação |  |  |  |  |  | resources Desenvolvedor → Gerente de Projeto-Rogério R. Fernandes; Analista de Sistemas-Lucas Amaral |
| 31 | Teste |  |  |  |  |  | resources Analista de Testes → Gerente de Projeto-Lucas Amaral; Analista de Sistemas-Rogério R. Fernandes |
| 32 | **UC01: Manter despesas financeiras** | 2016-05-18 A |  |  | 0% → 40% |  |  |
| 33 | Requisitos e Análise (detalhamento e prototipação) | 2016-05-18 A | 2016-05-20 A |  | 0% → 100% |  | was named Requisitos e Análise (detalhamento); resources Analista de Sistemas → Gerente de Projeto-Rogério R. Fernandes; Analista de Sistemas-Lucas Amaral |
| 34 | Implementação |  |  |  |  |  | resources Desenvolvedor → Gerente de Projeto-Lucas Amaral; Analista de Sistemas-Rogério R. Fernandes |
| 35 | Teste |  |  |  |  |  | resources Analista de Testes → Gerente de Projeto-Rogério R. Fernandes; Analista de Sistemas-Lucas Amaral |
| 36 | Apresentação 2o Trabalho |  |  |  |  |  | resources none → Gerente de Projeto-Lucas Amaral; Analista de Sistemas-Rogério R. Fernandes |
| 39 | Planejamento |  |  |  |  |  | resources Gerente de Projeto → Gerente de Projeto-Lucas Amaral; Analista de Sistemas-Rogério R. Fernandes |
| 40 | Monitoramento e controle - Relatório de Progresso ?? |  |  |  |  |  | resources Gerente de Projeto → Gerente de Projeto-Rogério R. Fernandes; Analista de Sistemas-Lucas Amaral |
| 41 | Monitoramento e controle - Relatório de Progresso ?? |  |  |  |  |  | resources Gerente de Projeto → Gerente de Projeto-Lucas Amaral; Analista de Sistemas-Rogério R. Fernandes |
| 43 | Requisitos e Análise (detalhamento e prototipação) |  |  |  |  |  | was named Requisitos e Análise (detalhamento); resources Analista de Sistemas → Gerente de Projeto-Rogério R. Fernandes; Analista de Sistemas-Lucas Amaral |
| 44 | Implementação |  |  |  |  |  | resources Desenvolvedor → Gerente de Projeto-Lucas Amaral; Analista de Sistemas-Rogério R. Fernandes |
| 45 | Teste |  |  |  |  |  | resources Analista de Testes → Gerente de Projeto-Rogério R. Fernandes; Analista de Sistemas-Lucas Amaral |
| 47 | Requisitos e Análise (detalhamento e prototipação) |  |  |  |  |  | was named Requisitos e Análise (detalhamento); resources Analista de Sistemas → Gerente de Projeto-Lucas Amaral; Analista de Sistemas-Rogério R. Fernandes |
| 48 | Implementação |  |  |  |  |  | resources Desenvolvedor → Gerente de Projeto-Rogério R. Fernandes; Analista de Sistemas-Lucas Amaral |
| 49 | Teste |  |  |  |  |  | resources Analista de Testes → Gerente de Projeto-Lucas Amaral; Analista de Sistemas-Rogério R. Fernandes |
| 51 | Requisitos e Análise (detalhamento e prototipação) |  |  |  |  |  | was named Requisitos e Análise (detalhamento); resources Analista de Sistemas → Gerente de Projeto-Rogério R. Fernandes; Analista de Sistemas-Lucas Amaral |
| 52 | Implementação |  |  |  |  |  | resources Desenvolvedor → Gerente de Projeto-Lucas Amaral; Analista de Sistemas-Rogério R. Fernandes |
| 53 | Teste |  |  |  |  |  | resources Analista de Testes → Gerente de Projeto-Rogério R. Fernandes; Analista de Sistemas-Lucas Amaral |
| 55 | Implantação |  |  |  |  |  | resources Analista de Sistemas → Gerente de Projeto-Lucas Amaral; Analista de Sistemas-Rogério R. Fernandes |
| 56 | Apresentação 3o Trabalho |  |  |  |  |  | resources none → Gerente de Projeto-Rogério R. Fernandes; Analista de Sistemas-Lucas Amaral |

## Version 7 (saved 2016-05-18)

Note of the change: 20_05_2016

Last finish stays 2016-07-27. Complete tasks 21 → 22.

Changed:

| ID | Task | Start | Finish | Complete | Total float |
| --- | --- | --- | --- | --- | --- |
| 1 | **Prática em SI - Cronograma Projeto - My Money** |  |  | 68% → 77% |  |
| 18 | **Elaboração** |  |  | 65% → 88% |  |
| 19 | **Gerenciamento de Projeto** |  |  | 67% → 83% |  |
| 24 | Monitoramento e controle - Relatório de Progresso 09 | 2016-05-18 A | 2016-05-18 A | 0% → 100% |  |
| 28 | **UC05: Manter usuário** |  |  | 11% → 76% |  |
| 30 | Implementação | 2016-05-09 A |  | 0% → 75% | 48d → 49.7d |
| 31 | Teste | 2016-05-18 A |  | 0% → 55% | 49d → 49.5d |
| 32 | **UC01: Manter despesas financeiras** |  |  | 40% → 74% |  |
| 34 | Implementação | 2016-05-20 A |  | 0% → 60% | 45.88d → 46.38d |
| 35 | Teste | 2016-05-24 A |  | 0% → 50% |  |
